# DANA - Assessment - week 24

Schedule from MS Project, 2019-08-29 to 2019-12-20, status date 2019-09-19, A marks actual dates.

## Calendars

- 24 Horas: Mon-Sun 00:00-24:00.
- padrão 2S: Mon-Fri 08:00-12:00, 13:00-17:00; Sat-Sun off. Exceptions (off unless hours are given): 2019-11-15 (Proclamação da Republica).

## Schedule

| ID | WBS | Task | Type | Duration | Start | Finish | Predecessors | Complete | Remaining | Baseline start | Baseline finish | Baseline duration | Total slack | Free slack | Constraint | % Planejado |
| --- | --- | --- | --- | --- | --- | --- | --- | --- | --- | --- | --- | --- | --- | --- | --- | --- |
| 1 | 1 | **Dana TMP - Gravataí** |  | 81d | 2019-08-29 A | 2019-12-20 |  | 9% | 73.39d | 2019-08-29 | 2020-01-09 | 92.12d | 0d |  |  | 10% |
| 2 | 1.1 | **Iniciação** |  | 1d | 2019-08-29 A | 2019-08-29 A |  | 100% |  |  |  |  |  |  |  | 100% |
| 3 | 1.1.1 | Agendar Kickoff externo |  | 1d | 2019-08-29 A | 2019-08-29 A |  | 100% |  | 2019-08-29 | 2019-08-29 | 1d |  |  | start no earlier than 2019-08-29 | 100% |
| 4 | 1.1.2 | Kick-off realizado | milestone | 0d | 2019-08-29 A | 2019-08-29 A | 3 | 100% |  | 2019-08-29 | 2019-08-29 | 0d |  |  |  | 100% |
| 5 | 1.2 | **Planejamento** |  | 28d | 2019-08-30 A | 2019-10-08 |  | 28% | 20.08d | 2019-08-30 | 2019-09-03 | 3d | 52d |  |  | 37% |
| 6 | 1.2.1 | Realizar planejamento das atividades com cliente |  | 3d | 2019-08-30 A | 2019-09-03 A | 4 | 100% |  | 2019-08-30 | 2019-09-03 | 3d |  |  |  | 100% |
| 7 | 1.2.2 | **HLD (High Level Design)** |  | 22d | 2019-09-04 A | 2019-10-03 |  | 39% | 13.48d | 2019-09-04 | 2019-09-30 | 19d | 55d |  |  | 63% |
| 8 | 1.2.2.1 | **TELEFONIA** |  | 15d | 2019-09-04 A | 2019-09-24 |  | 40% | 9d | 2019-09-04 | 2019-09-11 | 6d | 0d |  |  | 100% |
| 9 | 1.2.2.1.1 | Elaborar o HLD de TELEFONIA |  | 3d | 2019-09-04 A | 2019-09-06 A | 6 | 100% |  | 2019-09-04 | 2019-09-06 | 3d |  |  |  | 100% |
| 10 | 1.2.2.1.2 | Enviar HLD TELEFONIA para aprovação |  | 12d | 2019-09-09 A | 2019-09-24 | 9 | 25% | 9d | 2019-09-09 | 2019-09-11 | 3d | 0d |  |  | 100% |
| 11 | 1.2.2.1.3 | HLD TELEFONIA aprovado | milestone | 0d | 2019-09-24 | 2019-09-24 | 10 |  |  | 2019-09-11 | 2019-09-11 | 0d | 0d |  |  | 100% |
| 12 | 1.2.2.2 | **LAN** |  | 9d | 2019-09-12 A | 2019-09-24 |  | 67% | 3d | 2019-09-12 | 2019-09-19 | 6d | 39.12d |  |  | 100% |
| 13 | 1.2.2.2.1 | Elaborar o HLD de LAN |  | 5d | 2019-09-12 A | 2019-09-18 A | 11 | 100% |  | 2019-09-12 | 2019-09-18 | 5d |  |  |  | 100% |
| 14 | 1.2.2.2.2 | Enviar para aprovação |  | 4d | 2019-09-19 A | 2019-09-24 | 13 | 25% | 3d | 2019-09-19 | 2019-09-19 | 1d | 39.12d | 0d |  | 100% |
| 15 | 1.2.2.2.3 | HLD LAN aprovado | milestone | 0d | 2019-09-24 | 2019-09-24 | 14 |  |  | 2019-09-19 | 2019-09-19 | 0d | 39.12d | 0d |  | 100% |
| 16 | 1.2.2.3 | **WLAN** |  | 7d | 2019-09-25 | 2019-10-03 |  |  |  | 2019-09-20 | 2019-09-30 | 7d | 55d |  |  | 0% |
| 17 | 1.2.2.3.1 | Elaborar o HLD de WLAN |  | 5d | 2019-09-25 | 2019-10-01 | 14 |  |  | 2019-09-20 | 2019-09-26 | 5d | 55d | 0d |  | 0% |
| 18 | 1.2.2.3.2 | Enviar para aprovação |  | 2d | 2019-10-02 | 2019-10-03 | 17 |  |  | 2019-09-27 | 2019-09-30 | 2d | 55d | 0d |  | 0% |
| 19 | 1.2.2.3.3 | HLD LAN aprovado | milestone | 0d | 2019-10-03 | 2019-10-03 | 18 |  |  | 2019-09-30 | 2019-09-30 | 0d | 55d |  |  | 0% |
| 20 | 1.2.3 | **NIP (Networking Implementation Plan)** |  | 10d | 2019-09-25 | 2019-10-08 |  |  |  | 2019-09-20 | 2019-10-03 | 10d | 0d |  |  | 0% |
| 21 | 1.2.3.1 | **LAN** |  | 7d | 2019-09-25 | 2019-10-03 |  |  |  | 2019-09-20 | 2019-09-30 | 7d | 39.12d |  |  | 0% |
| 22 | 1.2.3.1.1 | Elaborar o NIP de LAN |  | 5d | 2019-09-25 | 2019-10-01 | 15 |  |  | 2019-09-20 | 2019-09-26 | 5d | 39.12d | 0d |  | 0% |
| 23 | 1.2.3.1.2 | Enviar NIP LAN para aprovação |  | 2d | 2019-10-02 | 2019-10-03 | 22 |  |  | 2019-09-27 | 2019-09-30 | 2d | 55d | 0d |  | 0% |
| 24 | 1.2.3.1.3 | NIP LAN aprovado | milestone | 0d | 2019-10-03 | 2019-10-03 | 23 |  |  | 2019-09-30 | 2019-09-30 | 0d | 55d |  |  | 0% |

| ID | WBS | Task | Type | Duration | Start | Finish | Predecessors | Baseline start | Baseline finish | Baseline duration | Total slack | Free slack | Constraint | % Planejado |
| --- | --- | --- | --- | --- | --- | --- | --- | --- | --- | --- | --- | --- | --- | --- |
| 25 | 1.2.3.2 | **TELEFONIA** |  | 7d | 2019-09-25 | 2019-10-03 |  | 2019-09-23 | 2019-10-02 | 7d | 0d |  |  | 0% |
| 26 | 1.2.3.2.1 | Elaborar o NIP de TELEFONIA |  | 5d | 2019-09-25 | 2019-10-01 | 11 | 2019-09-23 | 2019-09-30 | 5d | 0d |  | start no earlier than 2019-09-23 | 0% |
| 27 | 1.2.3.2.2 | Enviar NIP TELEFONIA para aprovação |  | 2d | 2019-10-02 | 2019-10-03 | 26 | 2019-09-30 | 2019-10-02 | 2d | 0d |  |  | 0% |
| 28 | 1.2.3.2.3 | NIP TELEFONIA aprovado | milestone | 0d | 2019-10-03 | 2019-10-03 | 27 | 2019-10-02 | 2019-10-02 | 0d | 0d |  |  | 0% |
| 29 | 1.2.3.3 | **WLAN** |  | 5d | 2019-10-02 | 2019-10-08 |  | 2019-09-27 | 2019-10-03 | 5d | 39.12d |  |  | 0% |
| 30 | 1.2.3.3.1 | Elaborar o NIP de WLAN |  | 3d | 2019-10-02 | 2019-10-04 | 22 | 2019-09-27 | 2019-10-01 | 3d | 39.12d | 0d |  | 0% |
| 31 | 1.2.3.3.2 | Enviar NIP WLAN para aprovação |  | 2d | 2019-10-07 | 2019-10-08 | 30 | 2019-10-02 | 2019-10-03 | 2d | 39.12d | 0d |  | 0% |
| 32 | 1.2.3.3.3 | NIP WLAN aprovado | milestone | 0d | 2019-10-08 | 2019-10-08 | 31 | 2019-10-03 | 2019-10-03 | 0d | 39.12d | 0d |  | 0% |
| 33 | 1.3 | **Migração** |  | 25.88d | 2019-10-02 | 2019-11-06 |  | 2019-09-25 | 2019-11-05 | 29.12d | 1.88d |  |  | 0% |
| 34 | 1.3.1 | Equipamentos LAN entregues | milestone | 0d | 2019-10-02 | 2019-10-02 |  | 2019-09-25 | 2019-09-25 | 0d | 18.88d | 0d | start no earlier than 2019-10-02 | 0% |
| 35 | 1.3.2 | Equipamentos WLAN entregues | milestone | 0d | 2019-10-02 | 2019-10-02 |  | 2019-09-25 | 2019-09-25 | 0d | 44d | 4.88d | start no earlier than 2019-10-02 | 0% |
| 36 | 1.3.3 | Equipamentos TELEFONIA entregues | milestone | 0d | 2019-10-02 | 2019-10-02 |  | 2019-09-25 | 2019-09-25 | 0d | 56.88d |  | start no earlier than 2019-10-02 | 0% |
| 37 | 1.3.4 | **LAN** |  | 22.88d | 2019-10-02 | 2019-11-03 |  | 2019-09-25 | 2019-10-30 | 26d | 18.88d |  |  | 0% |
| 38 | 1.3.4.1 | Realizar Staging dos SWs |  | 7d | 2019-10-02 | 2019-10-11 | 34 | 2019-09-25 | 2019-10-03 | 7d | 18.88d | 0d |  | 0% |
| 39 | 1.3.4.2 | STAGING SWs realizados | milestone | 0d | 2019-10-11 | 2019-10-11 | 38 | 2019-10-03 | 2019-10-03 | 0d | 18.88d | 0d |  | 0% |
| 40 | 1.3.4.3 | Elaborar GMUD LAN |  | 3d | 2019-10-04 | 2019-10-09 | 39FS-5d | 2019-10-04 | 2019-10-10 | 5d | 18.88d | 0d |  | 0% |
| 41 | 1.3.4.4 | Enviar GMUD LAN para aprovação |  | 2d | 2019-10-09 | 2019-10-11 | 40 | 2019-10-11 | 2019-10-14 | 2d | 18.88d | 0d |  | 0% |
| 42 | 1.3.4.5 | GMUD LAN aprovado | milestone | 0d | 2019-10-11 | 2019-10-11 | 41 | 2019-10-14 | 2019-10-14 | 0d | 18.88d | 0d |  | 0% |
| 43 | 1.3.4.6 | **Instalação de 01 módulo SFP para unificação/redundância dos comutadores e padronização lógica (Qualquer horário)** |  | 11d | 2019-10-11 | 2019-10-28 |  | 2019-10-15 | 2019-10-17 | 3d | 38.88d |  |  | 0% |
| 44 | 1.3.4.6.1 | Rack Monitoramento |  | 1d | 2019-10-11 | 2019-10-14 | 42 | 2019-10-15 | 2019-10-15 | 1d | 47.88d | 0d |  | 0% |
| 45 | 1.3.4.6.2 | SGA53 – ETEI |  | 1d | 2019-10-11 | 2019-10-14 | 44SS | 2019-10-15 | 2019-10-15 | 1d | 47.88d | 0d |  | 0% |
| 46 | 1.3.4.6.3 | PTG43 – Sala Reunião |  | 1d | 2019-10-11 | 2019-10-14 | 45SS | 2019-10-15 | 2019-10-15 | 1d | 47.88d | 0d |  | 0% |
| 47 | 1.3.4.6.4 | PTG42 – Almoxarifado |  | 1d | 2019-10-11 | 2019-10-14 | 46SS | 2019-10-15 | 2019-10-15 | 1d | 47.88d | 0d |  | 0% |
| 48 | 1.3.4.6.5 | DFR52 – Refeitório |  | 1d | 2019-10-11 | 2019-10-14 | 47SS | 2019-10-15 | 2019-10-15 | 1d | 47.88d | 0d |  | 0% |
| 49 | 1.3.4.6.6 | DFR51 – Exp. Final |  | 1d | 2019-10-11 | 2019-10-14 | 48SS | 2019-10-15 | 2019-10-15 | 1d | 47.88d | 6d |  | 0% |
| 50 | 1.3.4.6.7 | DFR49 - Martelos |  | 1d | 2019-10-22 | 2019-10-23 | 49 | 2019-10-16 | 2019-10-16 | 1d | 41.88d | 0d | start no earlier than 2019-10-22 | 0% |
| 51 | 1.3.4.6.8 | ADM08 – Portaria Nova |  | 1d | 2019-10-22 | 2019-10-23 | 50SS | 2019-10-16 | 2019-10-16 | 1d | 41.88d | 0d |  | 0% |
| 52 | 1.3.4.6.9 | SBC13 – Auditório |  | 1d | 2019-10-22 | 2019-10-23 | 51SS | 2019-10-16 | 2019-10-16 | 1d | 41.88d | 0d |  | 0% |
| 53 | 1.3.4.6.10 | SBC14 – Preset |  | 1d | 2019-10-22 | 2019-10-23 | 52SS | 2019-10-16 | 2019-10-16 | 1d | 41.88d | 0d |  | 0% |
| 54 | 1.3.4.6.11 | SBC15 – Preset Calibres |  | 1d | 2019-10-22 | 2019-10-23 | 53SS | 2019-10-16 | 2019-10-16 | 1d | 41.88d | 0d |  | 0% |
| 55 | 1.3.4.6.12 | SBC17 – Reforma |  | 1d | 2019-10-22 | 2019-10-23 | 54SS | 2019-10-16 | 2019-10-16 | 1d | 41.88d | 1d |  | 0% |
| 56 | 1.3.4.6.13 | SBC20 – Lab. Metalúrgico |  | 1d | 2019-10-23 | 2019-10-24 | 55SS | 2019-10-16 | 2019-10-16 | 1d | 40.88d | 0d | start no earlier than 2019-10-23 | 0% |
| 57 | 1.3.4.6.14 | SBC23 – Terminal |  | 1d | 2019-10-23 | 2019-10-24 | 56SS | 2019-10-16 | 2019-10-16 | 1d | 40.88d | 0d |  | 0% |
| 58 | 1.3.4.6.15 | SBC24 – Garfos e Flange |  | 1d | 2019-10-23 | 2019-10-24 | 57SS | 2019-10-16 | 2019-10-16 | 1d | 40.88d | 0d |  | 0% |
| 59 | 1.3.4.6.16 | SBC25 – Ponteira |  | 1d | 2019-10-23 | 2019-10-24 | 58SS | 2019-10-16 | 2019-10-16 | 1d | 40.88d | 0d |  | 0% |
| 60 | 1.3.4.6.17 | SBC27 – Finalíssima |  | 1d | 2019-10-23 | 2019-10-24 | 59SS | 2019-10-17 | 2019-10-17 | 1d | 40.88d | 0d |  | 0% |
| 61 | 1.3.4.6.18 | DFA05 – Auditório |  | 1d | 2019-10-23 | 2019-10-24 | 60SS | 2019-10-17 | 2019-10-17 | 1d | 40.88d | 1d |  | 0% |
| 62 | 1.3.4.6.19 | DFR48 - Manutenção |  | 1d | 2019-10-24 | 2019-10-25 | 61SS | 2019-10-17 | 2019-10-17 | 1d | 39.88d | 0d | start no earlier than 2019-10-24 | 0% |
| 63 | 1.3.4.6.20 | PTG34 – Auditório PTG |  | 1d | 2019-10-24 | 2019-10-25 | 62SS | 2019-10-17 | 2019-10-17 | 1d | 39.88d | 0d |  | 0% |
| 64 | 1.3.4.6.21 | PTG35 – PCP/Comp. |  | 1d | 2019-10-24 | 2019-10-25 | 63SS | 2019-10-17 | 2019-10-17 | 1d | 39.88d | 0d |  | 0% |
| 65 | 1.3.4.6.22 | PTG36 – Lab. Motores |  | 1d | 2019-10-24 | 2019-10-25 | 64SS | 2019-10-17 | 2019-10-17 | 1d | 39.88d | 0d |  | 0% |
| 66 | 1.3.4.6.23 | PTG44 – Manutenção |  | 1d | 2019-10-24 | 2019-10-25 | 65SS | 2019-10-17 | 2019-10-17 | 1d | 39.88d | 0d |  | 0% |
| 67 | 1.3.4.6.24 | ADM02 – SAM |  | 1d | 2019-10-24 | 2019-10-25 | 66SS | 2019-10-17 | 2019-10-17 | 1d | 39.88d | 1d |  | 0% |
| 68 | 1.3.4.6.25 | GNS54 – Ginásio |  | 1d | 2019-10-25 | 2019-10-28 | 67SS | 2019-10-17 | 2019-10-17 | 1d | 38.88d | 0d | start no earlier than 2019-10-25 | 0% |

| ID | WBS | Task | Type | Duration | Start | Finish | Predecessors | Baseline start | Baseline finish | Baseline duration | Total slack | Free slack | Constraint | Calendar | % Planejado |
| --- | --- | --- | --- | --- | --- | --- | --- | --- | --- | --- | --- | --- | --- | --- | --- |
| 69 | 1.3.4.6.26 | **MTZ46 – Melhorias** |  | 0.2d | 2019-10-25 | 2019-10-25 |  | 2019-10-30 | 2019-10-30 | 1d | 39.67d |  |  |  | 0% |
| 70 | 1.3.4.6.26.1 | Instalar 02 módulos SFP para unificação/redundância dos comutadores e padronização lógica. |  | 0.2d | 2019-10-25 | 2019-10-25 | 68SS | 2019-10-30 | 2019-10-30 | 1d | 39.67d | 0d |  |  | 0% |
| 71 | 1.3.4.6.26.2 | MTZ47 – Sala Qualidade instalado | milestone | 0d | 2019-10-25 | 2019-10-25 | 70 | 2019-10-30 | 2019-10-30 | 0d | 39.67d |  |  |  | 0% |
| 72 | 1.3.4.7 | **Atividades após o horário comercial** |  | 2.88d | 2019-10-15 | 2019-10-17 |  | 2019-10-28 | 2019-10-30 | 3d | 45d |  |  |  | 0% |
| 73 | 1.3.4.7.1 | **DFA04 – Compras** |  | 0.88d | 2019-10-15 | 2019-10-15 |  | 2019-10-28 | 2019-10-28 | 1d | 45d |  |  |  | 0% |
| 74 | 1.3.4.7.1.1 | Substituir WS-2960X-48FPS-L por 02x WS-2960X-24PS-L. Instalação de 02 módulos stack e 01 módulo SFP para unificação/redundância dos comutadores e padronização lógica; |  | 1d | 2019-10-15 | 2019-10-15 | 95 | 2019-10-28 | 2019-10-28 | 1d | 193.88d | 0d | start no earlier than 2019-10-15 | 24 Horas | 0% |
| 75 | 1.3.4.7.2 | **DFA03 – Refeitório** |  | 0.88d | 2019-10-15 | 2019-10-15 |  | 2019-10-28 | 2019-10-28 | 1d | 47d |  |  |  | 0% |
| 76 | 1.3.4.7.2.1 | Substituir o WS-2960-24TC-S p/ WS-2960X-24PS-L e organização lógica; |  | 1d | 2019-10-15 | 2019-10-15 | 74SS | 2019-10-28 | 2019-10-28 | 1d | 198d |  |  | 24 Horas | 0% |
| 77 | 1.3.4.7.3 | **DFA07 – DTI*** |  | 1d | 2019-10-16 | 2019-10-16 |  | 2019-10-29 | 2019-10-29 | 1d | 45d |  |  |  | 0% |
| 78 | 1.3.4.7.3.1 | Instalar 02 módulos stack e 01 módulo SFP para unificação/redundância dos comutadores e padronização lógica; |  | 1d | 2019-10-16 | 2019-10-16 | 74 | 2019-10-29 | 2019-10-29 | 1d | 45d | 0d |  |  | 0% |
| 79 | 1.3.4.7.4 | **DFA06 – Diretoria** |  | 1d | 2019-10-16 | 2019-10-16 |  | 2019-10-29 | 2019-10-29 | 1d | 45d |  |  |  | 0% |
| 80 | 1.3.4.7.4.1 | Instalar 02 módulos stack e 01 módulo SFP para unificação/redundância dos comutadores e padronização lógica; |  | 1d | 2019-10-16 | 2019-10-16 | 78SS | 2019-10-29 | 2019-10-29 | 1d | 45d | 0d |  |  | 0% |
| 81 | 1.3.4.7.5 | **PTG40 – Eng. Processo** |  | 1d | 2019-10-16 | 2019-10-16 |  | 2019-10-29 | 2019-10-29 | 1d | 45d |  |  |  | 0% |
| 82 | 1.3.4.7.5.1 | Instalar de 02 módulos stack e 01 módulo SFP para unificação/redundância dos comutadores e padronização lógica; |  | 1d | 2019-10-16 | 2019-10-16 | 80SS | 2019-10-29 | 2019-10-29 | 1d | 45d | 0d |  |  | 0% |
| 83 | 1.3.4.7.6 | **PTG32 – Eng. Produtos** |  | 1d | 2019-10-17 | 2019-10-17 |  | 2019-10-29 | 2019-10-29 | 1d | 45d |  |  |  | 0% |
| 84 | 1.3.4.7.6.1 | Instalar de 02 módulos stack e 01 módulo SFP para unificação/redundância dos comutadores e padronização lógica; |  | 1d | 2019-10-17 | 2019-10-17 | 82 | 2019-10-29 | 2019-10-29 | 1d | 45d | 0d |  |  | 0% |
| 85 | 1.3.4.7.7 | **NKG30 – Sala de Reunião** |  | 1d | 2019-10-17 | 2019-10-17 |  | 2019-10-30 | 2019-10-30 | 1d | 45d |  |  |  | 0% |
| 86 | 1.3.4.7.7.1 | Instalar 01 Instalação switch WS-2960X-24PS-L para atender densidades de portas locais. Instalação de 02 módulos stack e 01 módulo SFP para unificação/redundância dos comutadores e padronização lógica. Remanejamento do Up Link do rack para o Core |  | 1d | 2019-10-17 | 2019-10-17 | 84SS | 2019-10-30 | 2019-10-30 | 1d | 45d | 0d |  |  | 0% |
| 87 | 1.3.4.7.8 | **MTZ47 – Sala Qualidade** |  | 1d | 2019-10-17 | 2019-10-17 |  | 2019-10-30 | 2019-10-30 | 1d | 45d |  |  |  | 0% |
| 88 | 1.3.4.7.8.1 | Substituir WS-2960X-48FPS-L por 02x WS-2960X-24PS-L. Instalação de 02 módulos stack e 01 módulo SFP para unificação/redundância dos comutadores e padronização lógica; |  | 1d | 2019-10-17 | 2019-10-17 | 86SS | 2019-10-30 | 2019-10-30 | 1d | 45d |  |  |  | 0% |
| 89 | 1.3.4.8 | **Atividades aos Domingos** |  | 15d | 2019-10-13 | 2019-11-03 |  | 2019-10-20 | 2019-10-27 | 5d | 18d |  |  |  | 0% |
| 90 | 1.3.4.8.1 | **Data Center** |  | 0d | 2019-10-13 | 2019-10-13 |  | 2019-10-20 | 2019-10-20 | 0d | 18d |  |  |  | 0% |
| 91 | 1.3.4.8.1.1 | Instalar 02x WS-3850-24S-S sendo uma delas para substituição de 01 unidade, já existente, do modelo WS-3850-12S. Instalar 21x módulos SFP para unificação/redundância dos comutadores e padronização lógica; |  | 1d | 2019-10-13 | 2019-10-13 | 42 | 2019-10-20 | 2019-10-20 | 1d | 74.88d | 0d | start no earlier than 2019-10-13 | 24 Horas | 0% |
| 92 | 1.3.4.8.1.2 | Data Center instalado | milestone | 0d | 2019-10-13 | 2019-10-13 | 91SS | 2019-10-20 | 2019-10-20 | 0d | 18d | 5d |  |  | 0% |

| ID | WBS | Task | Type | Duration | Start | Finish | Predecessors | Baseline start | Baseline finish | Baseline duration | Total slack | Free slack | Constraint | Calendar | % Planejado |
| --- | --- | --- | --- | --- | --- | --- | --- | --- | --- | --- | --- | --- | --- | --- | --- |
| 93 | 1.3.4.8.2 | **ADM01 – PABX** |  | 0d | 2019-10-13 | 2019-10-13 |  | 2019-10-27 | 2019-10-27 | 0d | 47d |  |  |  | 0% |
| 94 | 1.3.4.8.2.1 | Instalar 02 módulos stack para unificação/redundância dos comutadores e padronização lógica; |  | 1d | 2019-10-13 | 2019-10-13 | 91SS | 2019-10-27 | 2019-10-27 | 1d | 199.88d | 0d |  | 24 Horas | 0% |
| 95 | 1.3.4.8.2.2 | ADM01 – PABX instalado | milestone | 0d | 2019-10-13 | 2019-10-13 | 94SS | 2019-10-27 | 2019-10-27 | 0d | 47d | 1.12d |  |  | 0% |
| 96 | 1.3.4.8.3 | **PTG39 – Reunião Eng.** |  | 0d | 2019-10-20 | 2019-10-20 |  | 2019-10-20 | 2019-10-20 | 0d | 13d |  |  |  | 0% |
| 97 | 1.3.4.8.3.1 | Instala 02x WS-C3850-12S. Instalar 01x WS-2960X-24PS-L substituindo 01 WS-2960-24TC-S. Instalar 02 módulos stack linha 3800 e instalar 02 módulos stack linha 2900. Instalação de 13 módulos SFP |  | 1d | 2019-10-20 | 2019-10-20 | 92SS | 2019-10-20 | 2019-10-20 | 1d | 53.88d | 0d | start no earlier than 2019-10-20 | 24 Horas | 0% |
| 98 | 1.3.4.8.3.2 | PTG39 – Reunião Eng. Instalado | milestone | 0d | 2019-10-20 | 2019-10-20 | 97SS | 2019-10-20 | 2019-10-20 | 0d | 13d | 0d |  |  | 0% |
| 99 | 1.3.4.8.4 | **PTG41 – Fábrica** |  | 0d | 2019-10-20 | 2019-10-20 |  | 2019-10-20 | 2019-10-20 | 0d | 13d |  |  |  | 0% |
| 100 | 1.3.4.8.4.1 | Substituir 01 switch 3Com por 01 unidade do WS-2960X-24PS-L. Instalar 02 módulos stack e 01 módulo SFP para unificação/redundância dos comutadores e padronização lógica; |  | 1d | 2019-10-20 | 2019-10-20 | 98SS | 2019-10-20 | 2019-10-20 | 1d | 53.88d | 0d |  | 24 Horas | 0% |
| 101 | 1.3.4.8.4.2 | PTG41 – Fábrica instalado | milestone | 0d | 2019-10-20 | 2019-10-20 | 100SS | 2019-10-20 | 2019-10-20 | 0d | 44d |  |  |  | 0% |
| 102 | 1.3.4.8.5 | **SOH45 – Eng. Produto** |  | 0d | 2019-10-20 | 2019-10-20 |  | 2019-10-20 | 2019-10-20 | 0d | 13d |  |  |  | 0% |
| 103 | 1.3.4.8.5.1 | Instalar 02x WS-C3850-12S. Instalar 01x WS-2960X-24PS-L substituindo 01 switch WS-2960-24TS-S. Instalar 02 módulos stack linha 3800 e 02 módulos stack linha 2900. Instalação de 05 módulos SFP |  | 1d | 2019-10-20 | 2019-10-20 | 100SS | 2019-10-20 | 2019-10-20 | 1d | 53.88d | 0d |  | 24 Horas | 0% |
| 104 | 1.3.4.8.5.2 | SOH45 – Eng. Produto instalado | milestone | 0d | 2019-10-20 | 2019-10-20 | 103SS | 2019-10-20 | 2019-10-20 | 0d | 13d | 0d |  |  | 0% |
| 105 | 1.3.4.8.6 | **DFR50 Komatzu** |  | 0d | 2019-10-20 | 2019-10-20 |  | 2019-10-20 | 2019-10-20 | 0d | 13d |  |  |  | 0% |
| 106 | 1.3.4.8.6.1 | Instalar 01x WS-2960X-24PS-L, vindo do rack SOH45, para substituir 01 switch SG-300-28. Instalar 01 módulo SFP para unificação/redundância dos comutadores e padronização lógica; |  | 1d | 2019-10-20 | 2019-10-20 | 104SS | 2019-10-20 | 2019-10-20 | 1d | 53.88d | 0d |  | 24 Horas | 0% |
| 107 | 1.3.4.8.6.2 | DFR50 Komatzu instalado | milestone | 0d | 2019-10-20 | 2019-10-20 | 106SS | 2019-10-20 | 2019-10-20 | 0d | 13d | 5d |  |  | 0% |
| 108 | 1.3.4.8.7 | **SCB11 – Show Room** |  | 0d | 2019-10-27 | 2019-10-27 |  | 2019-10-27 | 2019-10-27 | 0d | 8d |  |  |  | 0% |
| 109 | 1.3.4.8.7.1 | Instalar 01x WS-C3850-12S. Instalar 01 módulo de fibra C3850-NM-4-1GB. Instalar 02 módulos stack linha 3800 e instalação 02 módulos stack linha 2900.Instalar 19 módulos SFP para redundância do ambiente e organização lógica; |  | 1d | 2019-10-27 | 2019-10-27 | 107SS | 2019-10-27 | 2019-10-27 | 1d | 32.88d | 0d | start no earlier than 2019-10-27 | 24 Horas | 0% |
| 110 | 1.3.4.8.7.2 | SCB11 – Show Room instalado | milestone | 0d | 2019-10-27 | 2019-10-27 | 109SS | 2019-10-27 | 2019-10-27 | 0d | 8d | 0d |  |  | 0% |
| 111 | 1.3.4.8.8 | **SBC21 – Seg. industrial** |  | 0d | 2019-10-27 | 2019-10-27 |  | 2019-10-27 | 2019-10-27 | 0d | 8d |  |  |  | 0% |
| 112 | 1.3.4.8.8.1 | Instalar 02 módulos stack e 02 módulos SFP para unificação/redundância dos comutadores e padronização lógica. Remanejamento do Up Link do rack SBC27, sendo essa localidade um dos pontos de distribuição da rede; |  | 1d | 2019-10-27 | 2019-10-27 | 110SS | 2019-10-27 | 2019-10-27 | 1d | 32.88d | 0d |  | 24 Horas | 0% |
| 113 | 1.3.4.8.8.2 | SBC21 – Seg. industrial instalado | milestone | 0d | 2019-10-27 | 2019-10-27 | 112SS | 2019-10-27 | 2019-10-27 | 0d | 8d | 0d |  |  | 0% |
| 114 | 1.3.4.8.9 | **SBC28 – U.M. Deslizantes** |  | 0d | 2019-10-27 | 2019-10-27 |  | 2019-10-27 | 2019-10-27 | 0d | 8d |  |  |  | 0% |
| 115 | 1.3.4.8.9.1 | Substituir 01x WS-2960X-48FPS-L por 02 unidades do WS-2960X-24PS-L. Instalar 02 módulos stack e 01 módulo SFP para unificação/redundância dos comutadores e padronização lógica; |  | 1d | 2019-10-27 | 2019-10-27 | 113SS | 2019-10-27 | 2019-10-27 | 1d | 32.88d | 0d |  | 24 Horas | 0% |
| 116 | 1.3.4.8.9.2 | SBC28 – U.M. Deslizantes instalado | milestone | 0d | 2019-10-27 | 2019-10-27 | 115SS | 2019-10-27 | 2019-10-27 | 0d | 32.88d | 21d |  | 24 Horas | 0% |

| ID | WBS | Task | Type | Duration | Start | Finish | Predecessors | Baseline start | Baseline finish | Baseline duration | Total slack | Free slack | Constraint | Calendar | % Planejado |
| --- | --- | --- | --- | --- | --- | --- | --- | --- | --- | --- | --- | --- | --- | --- | --- |
| 117 | 1.3.4.8.10 | **SBC18 – Mezanino** |  | 0d | 2019-11-03 | 2019-11-03 |  | 2019-10-27 | 2019-10-27 | 0d | 3d |  |  |  | 0% |
| 118 | 1.3.4.8.10.1 | Instalar 02 módulos stack e 01 módulo SFP para unificação/redundância dos comutadores e padronização lógica; |  | 1d | 2019-11-03 | 2019-11-03 | 116SS | 2019-10-27 | 2019-10-27 | 1d | 11.88d | 0d | start no earlier than 2019-11-03 | 24 Horas | 0% |
| 119 | 1.3.4.8.10.2 | SBC18 – Mezanino instalado | milestone | 0d | 2019-11-03 | 2019-11-03 | 118SS | 2019-10-27 | 2019-10-27 | 0d | 3d | 0d |  |  | 0% |
| 120 | 1.3.4.8.11 | **SBC19 – Eng. Processos** |  | 0d | 2019-11-03 | 2019-11-03 |  | 2019-10-27 | 2019-10-27 | 0d | 3d |  |  |  | 0% |
| 121 | 1.3.4.8.11.1 | Instalar 02 módulos stack e 01 módulo SFP para unificação/redundância dos comutadores e padronização lógica; |  | 1d | 2019-11-03 | 2019-11-03 | 119SS | 2019-10-27 | 2019-10-27 | 1d | 11.88d | 0d |  | 24 Horas | 0% |
| 122 | 1.3.4.8.11.2 | SBC19 – Eng. Processos instalado | milestone | 0d | 2019-11-03 | 2019-11-03 | 121SS | 2019-10-27 | 2019-10-27 | 0d | 3d | 0d |  |  | 0% |
| 123 | 1.3.4.9 | Migração LAN realizada | milestone | 0d | 2019-11-03 | 2019-11-03 | 122 | 2019-10-30 | 2019-10-30 | 0d | 3d | 0d |  |  | 0% |
| 124 | 1.3.5 | **WLAN** |  | 13d | 2019-10-09 | 2019-10-27 |  | 2019-10-04 | 2019-10-27 | 16d | 39d |  |  |  | 0% |
| 125 | 1.3.5.1 | Realizar Staging dos Aps |  | 4d | 2019-10-09 | 2019-10-14 | 32, 35 | 2019-10-04 | 2019-10-09 | 4d | 39.12d | 0d |  |  | 0% |
| 126 | 1.3.5.2 | STAGING APs realizado | milestone | 0d | 2019-10-14 | 2019-10-14 | 125 | 2019-10-09 | 2019-10-09 | 0d | 39.12d | 0d |  |  | 0% |
| 127 | 1.3.5.3 | Entregar Aps para equipe de INFRA instalar |  | 1d | 2019-10-15 | 2019-10-15 | 126 | 2019-10-10 | 2019-10-10 | 1d | 39.12d | 0d |  |  | 0% |
| 128 | 1.3.5.4 | Elaborar GMUD WLAN |  | 5d | 2019-10-16 | 2019-10-22 | 127 | 2019-10-11 | 2019-10-17 | 5d | 39.12d | 0d |  |  | 0% |
| 129 | 1.3.5.5 | Enviar GMUD WLAN para aprovação |  | 2d | 2019-10-23 | 2019-10-24 | 128 | 2019-10-18 | 2019-10-21 | 2d | 39.12d | 0d |  |  | 0% |
| 130 | 1.3.5.6 | GMUD WLAN aprovado | milestone | 0d | 2019-10-24 | 2019-10-24 | 129 | 2019-10-21 | 2019-10-21 | 0d | 39.12d | 1d |  |  | 0% |
| 131 | 1.3.5.7 | Realizar a atualização da WLC |  | 1d | 2019-10-27 | 2019-10-27 | 130 | 2019-10-27 | 2019-10-27 | 1d | 162d | 0d | start no earlier than 2019-10-27 | 24 Horas | 0% |
| 132 | 1.3.5.8 | Atualização WLC realizada | milestone | 0d | 2019-10-27 | 2019-10-27 | 131 | 2019-10-27 | 2019-10-27 | 0d | 39d |  |  |  | 0% |
| 133 | 1.3.6 | **TELEFONIA** |  | 24d | 2019-10-04 | 2019-11-06 |  | 2019-10-02 | 2019-11-05 | 24d | 0d |  |  |  | 0% |
| 134 | 1.3.6.1 | Realizar o Staging de TELEFONIA |  | 2d | 2019-10-04 | 2019-10-07 | 28 | 2019-10-02 | 2019-10-04 | 2d | 0d |  |  |  | 0% |
| 135 | 1.3.6.2 | STAGING GW realizados | milestone | 0d | 2019-10-07 | 2019-10-07 | 134 | 2019-10-04 | 2019-10-04 | 0d | 0d |  |  |  | 0% |
| 136 | 1.3.6.3 | Elaborar GMUD TELEFONIA |  | 5d | 2019-10-08 | 2019-10-14 | 135 | 2019-10-04 | 2019-10-11 | 5d | 0d |  |  |  | 0% |
| 137 | 1.3.6.4 | Enviar GMUD TELEFONIA para aprovação |  | 2d | 2019-10-15 | 2019-10-16 | 136 | 2019-10-11 | 2019-10-15 | 2d | 0d |  |  |  | 0% |
| 138 | 1.3.6.5 | GMUD TELEFONIA aprovado | milestone | 0d | 2019-10-16 | 2019-10-16 | 137 | 2019-10-15 | 2019-10-15 | 0d | 0d |  |  |  | 0% |
| 139 | 1.3.6.6 | Realizar a migração TELEFONIA |  | 15d | 2019-10-17 | 2019-11-06 | 138 | 2019-10-15 | 2019-11-05 | 15d | 0d |  |  |  | 0% |
| 140 | 1.3.6.7 | Migração TELEFONIA realizada | milestone | 0d | 2019-11-06 | 2019-11-06 | 139 | 2019-11-05 | 2019-11-05 | 0d | 0d |  |  |  | 0% |

| ID | WBS | Task | Type | Duration | Start | Finish | Predecessors | Baseline start | Baseline finish | Baseline duration | Total slack | Free slack | Constraint | % Planejado |
| --- | --- | --- | --- | --- | --- | --- | --- | --- | --- | --- | --- | --- | --- | --- |
| 141 | 1.4 | **Documentação** |  | 12d | 2019-11-04 | 2019-11-20 |  | 2019-10-31 | 2019-11-19 | 12.12d | 3d |  |  | 0% |
| 142 | 1.4.1 | **TELEFONIA** |  | 9d | 2019-11-07 | 2019-11-20 |  | 2019-11-05 | 2019-11-19 | 9d | 0d |  |  | 0% |
| 143 | 1.4.1.1 | Preparar o AS-BUILT TELEFONIA |  | 5d | 2019-11-07 | 2019-11-13 | 140 | 2019-11-05 | 2019-11-12 | 5d | 0d |  |  | 0% |
| 144 | 1.4.1.2 | Enviar o AS-BUILT TELEFONIA para aprovação |  | 2d | 2019-11-14 | 2019-11-18 | 143 | 2019-11-12 | 2019-11-14 | 2d | 0d |  |  | 0% |
| 145 | 1.4.1.3 | AS-BUILT TELEFONIA aprovado | milestone | 0d | 2019-11-18 | 2019-11-18 | 144 | 2019-11-14 | 2019-11-14 | 0d | 0d |  |  | 0% |
| 146 | 1.4.1.4 | Traduzir AS-BUILT TELEFONIA para inglês |  | 2d | 2019-11-19 | 2019-11-20 | 145 | 2019-11-14 | 2019-11-19 | 2d | 22d | 0d |  | 0% |
| 147 | 1.4.1.5 | AS-BUILT inglês aprovado | milestone | 0d | 2019-11-20 | 2019-11-20 | 146 | 2019-11-19 | 2019-11-19 | 0d | 22d | 0d |  | 0% |
| 148 | 1.4.2 | **LAN** |  | 6d | 2019-11-04 | 2019-11-11 |  | 2019-10-31 | 2019-11-07 | 6d | 3d |  |  | 0% |
| 149 | 1.4.2.1 | Preparar o AS-BUILT LAN |  | 3d | 2019-11-04 | 2019-11-06 | 123 | 2019-10-31 | 2019-11-04 | 3d | 3d | 0d |  | 0% |
| 150 | 1.4.2.2 | Enviar AS-BUILT LAN |  | 1d | 2019-11-07 | 2019-11-07 | 149 | 2019-11-05 | 2019-11-05 | 1d | 6d | 0d |  | 0% |
| 151 | 1.4.2.3 | AS-BUILT LAN aprovado | milestone | 0d | 2019-11-07 | 2019-11-07 | 150 | 2019-11-05 | 2019-11-05 | 0d | 6d | 0d |  | 0% |
| 152 | 1.4.2.4 | Traduzir o AS-BUILT para inglês |  | 2d | 2019-11-08 | 2019-11-11 | 151 | 2019-11-06 | 2019-11-07 | 2d | 28d | 0d |  | 0% |
| 153 | 1.4.2.5 | AS-BUILT LAN inglês aprovado | milestone | 0d | 2019-11-11 | 2019-11-11 | 152 | 2019-11-07 | 2019-11-07 | 0d | 28d | 6d |  | 0% |
| 154 | 1.4.3 | **WLAN** |  | 6d | 2019-11-07 | 2019-11-14 |  | 2019-11-05 | 2019-11-12 | 6d | 3d |  |  | 0% |
| 155 | 1.4.3.1 | Preparar o AS-BUILT WLAN |  | 3d | 2019-11-07 | 2019-11-11 | 149 | 2019-11-05 | 2019-11-07 | 3d | 3d | 0d |  | 0% |
| 156 | 1.4.3.2 | Enviar AS-BUILT WLAN |  | 1d | 2019-11-12 | 2019-11-12 | 155 | 2019-11-08 | 2019-11-08 | 1d | 3d | 0d |  | 0% |
| 157 | 1.4.3.3 | AS-BUILT WLAN aprovado | milestone | 0d | 2019-11-12 | 2019-11-12 | 156 | 2019-11-08 | 2019-11-08 | 0d | 3d | 0d |  | 0% |
| 158 | 1.4.3.4 | Traduzir o AS-BUILT WLAN para inglês |  | 2d | 2019-11-13 | 2019-11-14 | 157 | 2019-11-11 | 2019-11-12 | 2d | 25d | 0d |  | 0% |
| 159 | 1.4.3.5 | AS-BUILT WLAN inglês aprovado | milestone | 0d | 2019-11-14 | 2019-11-14 | 158 | 2019-11-12 | 2019-11-12 | 0d | 25d | 3d |  | 0% |
| 160 | 1.4.4 | Documentação finalizada | milestone | 0d | 2019-11-20 | 2019-11-20 | 147, 159, 153 | 2019-11-19 | 2019-11-19 | 0d | 22d |  |  | 0% |
| 161 | 1.5 | **Encerramento do Projeto** |  | 24d | 2019-11-19 | 2019-12-20 |  | 2019-11-14 | 2020-01-09 | 37d | 0d |  |  | 0% |
| 162 | 1.5.1 | Enviar Termo de Aceite final |  | 1d | 2019-11-19 | 2019-11-19 | 145, 151, 157 | 2019-11-14 | 2019-11-18 | 1d | 0d |  |  | 0% |
| 163 | 1.5.2 | Aprovar Termo de Aceite Final |  | 0.5d | 2019-11-20 | 2019-11-20 | 162 | 2019-11-18 | 2019-11-25 | 5d | 0d |  |  | 0% |
| 164 | 1.5.3 | Termo de aceite entregue e aceito | milestone | 0d | 2019-11-20 | 2019-11-20 | 163 | 2019-11-25 | 2019-11-25 | 0d | 0d |  |  | 0% |
| 165 | 1.5.4 | Faturar o Projeto |  | 0.5d | 2019-11-20 | 2019-11-20 | 164SS | 2019-11-25 | 2019-11-26 | 1d | 0d |  | start no earlier than 2019-11-20 | 0% |
| 166 | 1.5.5 | Projeto faturado | milestone | 0d | 2019-11-20 | 2019-11-20 | 165 | 2019-11-26 | 2019-11-26 | 0d | 0d |  |  | 0% |
| 167 | 1.5.6 | Projeto TMP encerrado | milestone | 0d | 2019-11-20 | 2019-11-20 | 166 | 2019-11-26 | 2019-11-26 | 0d | 22d |  |  | 0% |
| 168 | 1.5.7 | Pagamento realizado | milestone | 0d | 2019-12-20 | 2019-12-20 | 166FS+30ed | 2020-01-09 | 2020-01-09 | 0d | 0d |  |  | 0% |
