# DANA - Assessment - week 24

Schedule from MS Project, 2019-08-29 to 2019-12-22, status date 2019-11-13, A marks actual dates.

## Calendars

- Padrão: Mon-Fri 08:00-12:00, 13:00-17:00; Sat-Sun off.
- 24 Horas: Mon-Sun 00:00-24:00.
- padrão 2S: Mon-Fri 08:00-12:00, 13:00-17:00; Sat-Sun off. Exceptions (off unless hours are given): 2019-11-15 (Proclamação da Republica).

## Resources

| Resource |
| --- |
| 2S |
| Robson |
| MAgno |
| Silva |
| Prado |
| *Pedro |
| Fabiana Vieira |
| Marília Dalila |

## Schedule

| ID | WBS | Task | Type | Duration | Start | Finish | Predecessors | Complete | Remaining | Baseline start | Baseline finish | Baseline duration | Total slack | Constraint | Resources | Work | Actual work | % Planejado |
| --- | --- | --- | --- | --- | --- | --- | --- | --- | --- | --- | --- | --- | --- | --- | --- | --- | --- | --- |
| 1 | 1 | **Dana TMP - Gravataí** |  | 81d | 2019-08-29 A | 2019-12-22 |  | 57% | 34.85d | 2019-08-29 | 2019-12-22 | 81d | 0d |  | Robson | 3383.4h | 202.4h | 74% |
| 2 | 1.1 | **Iniciação** |  | 1d | 2019-08-29 A | 2019-08-29 A |  | 100% |  | 2019-08-29 | 2019-08-29 | 1d |  |  | Fabiana Vieira | 8h | 8h | 100% |
| 3 | 1.1.1 | Agendar Kickoff externo |  | 1d | 2019-08-29 A | 2019-08-29 A |  | 100% |  | 2019-08-29 | 2019-08-29 | 1d |  | start no earlier than 2019-08-29 |  |  |  | 100% |
| 4 | 1.1.2 | Kick-off realizado | milestone | 0d | 2019-08-29 A | 2019-08-29 A | 3 | 100% |  | 2019-08-29 | 2019-08-29 | 0d |  |  |  |  |  | 100% |
| 5 | 1.2 | **Planejamento** |  | 46.12d | 2019-08-30 A | 2019-11-04 |  | 92% | 3.59d | 2019-08-30 | 2019-11-04 | 46.12d | 31.75d |  | Silva; Prado; *Pedro | 1155h | 120h | 100% |
| 6 | 1.2.1 | Realizar planejamento das atividades com cliente |  | 3d | 2019-08-30 A | 2019-09-03 A | 4 | 100% |  | 2019-08-30 | 2019-09-03 | 3d |  |  |  |  |  | 100% |
| 7 | 1.2.2 | **HLD (High Level Design)** |  | 22d | 2019-09-04 A | 2019-10-03 A |  | 100% |  | 2019-09-04 | 2019-10-03 | 22d |  |  |  | 48h | 48h | 100% |
| 8 | 1.2.2.1 | **TELEFONIA** |  | 15d | 2019-09-04 A | 2019-09-24 A |  | 100% |  | 2019-09-04 | 2019-09-24 | 15d |  |  |  | 48h | 48h | 100% |
| 9 | 1.2.2.1.1 | Elaborar o HLD de TELEFONIA |  | 3d | 2019-09-04 A | 2019-09-06 A | 6 | 100% |  | 2019-09-04 | 2019-09-06 | 3d |  |  | MAgno; Prado | 48h | 48h | 100% |
| 10 | 1.2.2.1.2 | Enviar HLD TELEFONIA para aprovação |  | 12d | 2019-09-09 A | 2019-09-24 A | 9 | 100% |  | 2019-09-09 | 2019-09-24 | 12d |  |  |  |  |  | 100% |
| 11 | 1.2.2.1.3 | HLD TELEFONIA aprovado | milestone | 0d | 2019-09-24 A | 2019-09-24 A | 10 | 100% |  | 2019-09-24 | 2019-09-24 | 0d |  |  |  |  |  | 100% |
| 12 | 1.2.2.2 | **LAN** |  | 9d | 2019-09-12 A | 2019-09-24 A |  | 100% |  | 2019-09-12 | 2019-09-24 | 9d |  |  |  |  |  | 100% |
| 13 | 1.2.2.2.1 | Elaborar o HLD de LAN |  | 5d | 2019-09-12 A | 2019-09-18 A | 11 | 100% |  | 2019-09-12 | 2019-09-18 | 5d |  |  |  |  |  | 100% |
| 14 | 1.2.2.2.2 | Enviar para aprovação |  | 4d | 2019-09-19 A | 2019-09-24 A | 13 | 100% |  | 2019-09-19 | 2019-09-24 | 4d |  |  |  |  |  | 100% |
| 15 | 1.2.2.2.3 | HLD LAN aprovado | milestone | 0d | 2019-09-24 A | 2019-09-24 A | 14 | 100% |  | 2019-09-24 | 2019-09-24 | 0d |  |  |  |  |  | 100% |
| 16 | 1.2.2.3 | **WLAN** |  | 7d | 2019-09-25 A | 2019-10-03 A |  | 100% |  | 2019-09-25 | 2019-10-03 | 7d |  |  |  |  |  | 100% |
| 17 | 1.2.2.3.1 | Elaborar o HLD de WLAN |  | 5d | 2019-09-25 A | 2019-10-01 A | 14 | 100% |  | 2019-09-25 | 2019-10-01 | 5d |  |  |  |  |  | 100% |
| 18 | 1.2.2.3.2 | Enviar para aprovação |  | 2d | 2019-10-02 A | 2019-10-03 A | 17 | 100% |  | 2019-10-02 | 2019-10-03 | 2d |  |  |  |  |  | 100% |
| 19 | 1.2.2.3.3 | HLD LAN aprovado | milestone | 0d | 2019-10-03 A | 2019-10-03 A | 18 | 100% |  | 2019-10-03 | 2019-10-03 | 0d |  |  |  |  |  | 100% |
| 20 | 1.2.3 | **NIP (Networking Implementation Plan)** |  | 28.12d | 2019-09-25 A | 2019-11-04 |  | 78% | 6.11d | 2019-09-25 | 2019-11-04 | 28.12d | 31.75d |  |  |  |  | 100% |
| 21 | 1.2.3.1 | **LAN** |  | 7d | 2019-09-25 A | 2019-10-03 A |  | 100% |  | 2019-09-25 | 2019-10-03 | 7d |  |  |  |  |  | 100% |
| 22 | 1.2.3.1.1 | Elaborar o NIP de LAN |  | 5d | 2019-09-25 A | 2019-10-01 A | 15 | 100% |  | 2019-09-25 | 2019-10-01 | 5d |  |  |  |  |  | 100% |
| 23 | 1.2.3.1.2 | Enviar NIP LAN para aprovação |  | 2d | 2019-10-02 A | 2019-10-03 A | 22 | 100% |  | 2019-10-02 | 2019-10-03 | 2d |  |  |  |  |  | 100% |
| 24 | 1.2.3.1.3 | NIP LAN aprovado | milestone | 0d | 2019-10-03 A | 2019-10-03 A | 23 | 100% |  | 2019-10-03 | 2019-10-03 | 0d |  |  |  |  |  | 100% |

| ID | WBS | Task | Type | Duration | Start | Finish | Predecessors | Complete | Remaining | Baseline start | Baseline finish | Baseline duration | Total slack | Free slack | Constraint | Calendar | Resources | Work | Actual work | % Planejado |
| --- | --- | --- | --- | --- | --- | --- | --- | --- | --- | --- | --- | --- | --- | --- | --- | --- | --- | --- | --- | --- |
| 25 | 1.2.3.2 | **TELEFONIA** |  | 7d | 2019-09-25 A | 2019-10-03 A |  | 100% |  | 2019-09-25 | 2019-10-03 | 7d |  |  |  |  |  |  |  | 100% |
| 26 | 1.2.3.2.1 | Elaborar o NIP de TELEFONIA |  | 5d | 2019-09-25 A | 2019-10-01 A | 11 | 100% |  | 2019-09-25 | 2019-10-01 | 5d |  |  | start no earlier than 2019-09-23 |  |  |  |  | 100% |
| 27 | 1.2.3.2.2 | Enviar NIP TELEFONIA para aprovação |  | 2d | 2019-10-02 A | 2019-10-03 A | 26 | 100% |  | 2019-10-02 | 2019-10-03 | 2d |  |  |  |  |  |  |  | 100% |
| 28 | 1.2.3.2.3 | NIP TELEFONIA aprovado | milestone | 0d | 2019-10-03 A | 2019-10-03 A | 27 | 100% |  | 2019-10-03 | 2019-10-03 | 0d |  |  |  |  |  |  |  | 100% |
| 29 | 1.2.3.3 | **WLAN** |  | 5d | 2019-10-28 A | 2019-11-04 |  | 17% | 4.13d | 2019-10-28 | 2019-11-04 | 5d | 31.75d |  |  |  |  |  |  | 100% |
| 30 | 1.2.3.3.1 | Elaborar o NIP de WLAN |  | 3d | 2019-10-28 A | 2019-10-31 | 22 | 29% | 2.13d | 2019-10-28 | 2019-10-31 | 3d | 31.75d | 0d | start no earlier than 2019-10-28 |  |  |  |  | 100% |
| 31 | 1.2.3.3.2 | Enviar NIP WLAN para aprovação |  | 2d | 2019-10-31 | 2019-11-04 | 30 |  |  | 2019-10-31 | 2019-11-04 | 2d | 31.75d | 0d |  |  |  |  |  | 100% |
| 32 | 1.2.3.3.3 | NIP WLAN aprovado | milestone | 0d | 2019-11-04 | 2019-11-04 | 31 |  |  | 2019-11-04 | 2019-11-04 | 0d | 31.75d | 0d |  |  |  |  |  | 100% |
| 33 | 1.3 | **Migração** |  | 34.88d | 2019-10-02 A | 2019-11-20 |  | 42% | 20.1d | 2019-10-02 | 2019-11-20 | 34.88d | 22d |  |  |  | *Pedro; Prado | 632.4h | 66.4h | 65% |
| 34 | 1.3.1 | Equipamentos LAN entregues | milestone | 0d | 2019-10-02 A | 2019-10-02 A |  | 100% |  | 2019-10-02 | 2019-10-02 | 0d |  |  | start no earlier than 2019-10-02 |  |  |  |  | 100% |
| 35 | 1.3.2 | Equipamentos WLAN entregues | milestone | 0d | 2019-10-02 A | 2019-10-02 A |  | 100% |  | 2019-10-02 | 2019-10-02 | 0d |  |  | start no earlier than 2019-10-02 |  |  |  |  | 100% |
| 36 | 1.3.3 | Equipamentos TELEFONIA entregues | milestone | 0d | 2019-10-02 A | 2019-10-02 A |  | 100% |  | 2019-10-02 | 2019-10-02 | 0d |  |  | start no earlier than 2019-10-02 |  |  |  |  | 100% |
| 37 | 1.3.4 | **LAN** |  | 34.88d | 2019-10-02 A | 2019-11-20 |  | 47% | 18.42d | 2019-10-02 | 2019-11-20 | 34.88d | 22d |  |  |  |  | 74.4h | 66.4h | 52% |
| 38 | 1.3.4.1 | Realizar Staging dos SWs |  | 7d | 2019-10-02 A | 2019-10-11 A | 34 | 100% |  | 2019-10-02 | 2019-10-11 | 7d |  |  |  |  |  |  |  | 100% |
| 39 | 1.3.4.2 | STAGING SWs realizados | milestone | 0d | 2019-10-11 A | 2019-10-11 A | 38 | 100% |  | 2019-10-11 | 2019-10-11 | 0d |  |  |  |  |  |  |  | 100% |
| 40 | 1.3.4.3 | Elaborar GMUD LAN |  | 3d | 2019-10-04 A | 2019-10-09 A | 39FS-5d | 100% |  | 2019-10-04 | 2019-10-09 | 3d |  |  |  |  |  |  |  | 100% |
| 41 | 1.3.4.4 | Enviar GMUD LAN para aprovação |  | 2d | 2019-10-09 A | 2019-10-11 A | 40 | 100% |  | 2019-10-09 | 2019-10-11 | 2d |  |  |  |  |  |  |  | 100% |
| 42 | 1.3.4.5 | GMUD LAN aprovado | milestone | 0d | 2019-10-11 A | 2019-10-11 A | 41 | 100% |  | 2019-10-11 | 2019-10-11 | 0d |  |  |  |  |  |  |  | 100% |
| 43 | 1.3.4.6 | **Instalação de 01 módulo SFP para unificação/redundância dos comutadores e padronização lógica (Qualquer horário)** |  | 1.88d | 2019-11-19 | 2019-11-20 |  |  |  | 2019-11-19 | 2019-11-20 | 1.88d | 22d |  |  |  |  |  |  | 0% |
| 44 | 1.3.4.6.1 | Rack Monitoramento |  | 1d | 2019-11-19 | 2019-11-19 | 42 |  |  | 2019-11-19 | 2019-11-19 | 1d | 91.88d | 0d | start no earlier than 2019-11-19 | 24 Horas |  |  |  | 0% |
| 45 | 1.3.4.6.2 | SGA53 – ETEI |  | 1d | 2019-11-19 | 2019-11-19 | 44SS |  |  | 2019-11-19 | 2019-11-19 | 1d | 91.88d | 0d |  | 24 Horas |  |  |  | 0% |
| 46 | 1.3.4.6.3 | PTG43 – Sala Reunião |  | 1d | 2019-11-19 | 2019-11-19 | 45SS |  |  | 2019-11-19 | 2019-11-19 | 1d | 91.88d | 0d |  | 24 Horas |  |  |  | 0% |
| 47 | 1.3.4.6.4 | PTG42 – Almoxarifado |  | 1d | 2019-11-19 | 2019-11-19 | 46SS |  |  | 2019-11-19 | 2019-11-19 | 1d | 91.88d | 0d |  | 24 Horas |  |  |  | 0% |
| 48 | 1.3.4.6.5 | DFR52 – Refeitório |  | 1d | 2019-11-19 | 2019-11-19 | 47SS |  |  | 2019-11-19 | 2019-11-19 | 1d | 91.88d | 0d |  | 24 Horas |  |  |  | 0% |
| 49 | 1.3.4.6.6 | DFR51 – Exp. Final |  | 1d | 2019-11-19 | 2019-11-19 | 48SS |  |  | 2019-11-19 | 2019-11-19 | 1d | 91.88d | 1.88d |  | 24 Horas |  |  |  | 0% |
| 50 | 1.3.4.6.7 | DFR49 - Martelos |  | 1d | 2019-11-20 | 2019-11-20 | 49 |  |  | 2019-11-20 | 2019-11-20 | 1d | 22d | 0d | start no earlier than 2019-10-22 |  |  |  |  | 0% |
| 51 | 1.3.4.6.8 | ADM08 – Portaria Nova |  | 1d | 2019-11-20 | 2019-11-20 | 50SS |  |  | 2019-11-20 | 2019-11-20 | 1d | 22d | 0d |  |  |  |  |  | 0% |
| 52 | 1.3.4.6.9 | SBC13 – Auditório |  | 1d | 2019-11-20 | 2019-11-20 | 51SS |  |  | 2019-11-20 | 2019-11-20 | 1d | 22d | 0d |  |  |  |  |  | 0% |
| 53 | 1.3.4.6.10 | SBC14 – Preset |  | 1d | 2019-11-20 | 2019-11-20 | 52SS |  |  | 2019-11-20 | 2019-11-20 | 1d | 22d | 0d |  |  |  |  |  | 0% |
| 54 | 1.3.4.6.11 | SBC15 – Preset Calibres |  | 1d | 2019-11-20 | 2019-11-20 | 53SS |  |  | 2019-11-20 | 2019-11-20 | 1d | 22d | 0d |  |  |  |  |  | 0% |
| 55 | 1.3.4.6.12 | SBC17 – Reforma |  | 1d | 2019-11-20 | 2019-11-20 | 54SS |  |  | 2019-11-20 | 2019-11-20 | 1d | 22d | 0d |  |  |  |  |  | 0% |
| 56 | 1.3.4.6.13 | SBC20 – Lab. Metalúrgico |  | 1d | 2019-11-20 | 2019-11-20 | 55SS |  |  | 2019-11-20 | 2019-11-20 | 1d | 22d | 0d | start no earlier than 2019-10-23 |  |  |  |  | 0% |
| 57 | 1.3.4.6.14 | SBC23 – Terminal |  | 1d | 2019-11-20 | 2019-11-20 | 56SS |  |  | 2019-11-20 | 2019-11-20 | 1d | 22d | 0d |  |  |  |  |  | 0% |
| 58 | 1.3.4.6.15 | SBC24 – Garfos e Flange |  | 1d | 2019-11-20 | 2019-11-20 | 57SS |  |  | 2019-11-20 | 2019-11-20 | 1d | 22d | 0d |  |  |  |  |  | 0% |
| 59 | 1.3.4.6.16 | SBC25 – Ponteira |  | 1d | 2019-11-20 | 2019-11-20 | 58SS |  |  | 2019-11-20 | 2019-11-20 | 1d | 22d | 0d |  |  |  |  |  | 0% |
| 60 | 1.3.4.6.17 | SBC27 – Finalíssima |  | 1d | 2019-11-20 | 2019-11-20 | 59SS |  |  | 2019-11-20 | 2019-11-20 | 1d | 22d | 0d |  |  |  |  |  | 0% |
| 61 | 1.3.4.6.18 | DFA05 – Auditório |  | 1d | 2019-11-20 | 2019-11-20 | 60SS |  |  | 2019-11-20 | 2019-11-20 | 1d | 22d | 0d |  |  |  |  |  | 0% |
| 62 | 1.3.4.6.19 | DFR48 - Manutenção |  | 1d | 2019-11-20 | 2019-11-20 | 61SS |  |  | 2019-11-20 | 2019-11-20 | 1d | 22d | 0d | start no earlier than 2019-10-24 |  |  |  |  | 0% |
| 63 | 1.3.4.6.20 | PTG34 – Auditório PTG |  | 1d | 2019-11-20 | 2019-11-20 | 62SS |  |  | 2019-11-20 | 2019-11-20 | 1d | 22d | 0d |  |  |  |  |  | 0% |
| 64 | 1.3.4.6.21 | PTG35 – PCP/Comp. |  | 1d | 2019-11-20 | 2019-11-20 | 63SS |  |  | 2019-11-20 | 2019-11-20 | 1d | 22d | 0d |  |  |  |  |  | 0% |
| 65 | 1.3.4.6.22 | PTG36 – Lab. Motores |  | 1d | 2019-11-20 | 2019-11-20 | 64SS |  |  | 2019-11-20 | 2019-11-20 | 1d | 22d | 0d |  |  |  |  |  | 0% |
| 66 | 1.3.4.6.23 | PTG44 – Manutenção |  | 1d | 2019-11-20 | 2019-11-20 | 65SS |  |  | 2019-11-20 | 2019-11-20 | 1d | 22d | 0d |  |  |  |  |  | 0% |
| 67 | 1.3.4.6.24 | ADM02 – SAM |  | 1d | 2019-11-20 | 2019-11-20 | 66SS |  |  | 2019-11-20 | 2019-11-20 | 1d | 22d | 0d |  |  |  |  |  | 0% |
| 68 | 1.3.4.6.25 | GNS54 – Ginásio |  | 1d | 2019-11-20 | 2019-11-20 | 67SS |  |  | 2019-11-20 | 2019-11-20 | 1d | 22d | 0d | start no earlier than 2019-10-25 |  |  |  |  | 0% |

Notes:
- 45: 12.11 - Foi realizado na noite do dia 11/11 a atualização do IOS. Sendo que não faz pare do projeto atual. Está pendente a padronização lógica e instalação do SFP.
- 61: 12.11 - Foi realizado na noite do dia 11/11 a atualização do IOS. Sendo que não faz pare do projeto atual. Está pendente a padronização lógica e instalação do SFP.
- 65: 12.11 - Foi realizado na noite do dia 11/11 a atualização do IOS. Sendo que não faz pare do projeto atual. Está pendente a padronização lógica e instalação do SFP.
- 66: 12.11 - Foi realizado na noite do dia 11/11 a atualização do IOS. Sendo que não faz pare do projeto atual. Está pendente a padronização lógica e instalação do SFP.

| ID | WBS | Task | Type | Duration | Start | Finish | Predecessors | Complete | Baseline start | Baseline finish | Baseline duration | Total slack | Free slack | Constraint | Calendar | Resources | Work | Actual work | % Planejado |
| --- | --- | --- | --- | --- | --- | --- | --- | --- | --- | --- | --- | --- | --- | --- | --- | --- | --- | --- | --- |
| 69 | 1.3.4.6.26 | **MTZ46 – Melhorias** |  | 0.2d | 2019-11-20 | 2019-11-20 |  |  | 2019-11-20 | 2019-11-20 | 0.2d | 22.8d |  |  |  |  |  |  | 0% |
| 70 | 1.3.4.6.26.1 | Instalar 02 módulos SFP para unificação/redundância dos comutadores e padronização lógica. |  | 0.2d | 2019-11-20 | 2019-11-20 | 68SS |  | 2019-11-20 | 2019-11-20 | 0.2d | 22.8d | 0d |  |  |  |  |  | 0% |
| 71 | 1.3.4.6.26.2 | MTZ46 – Sala Qualidade instalado | milestone | 0d | 2019-11-20 | 2019-11-20 | 70 |  | 2019-11-20 | 2019-11-20 | 0d | 22.8d |  |  |  |  |  |  | 0% |
| 72 | 1.3.4.7 | **Atividades após o horário comercial** |  | 2.58d | 2019-10-29 A | 2019-10-31 A |  | 100% | 2019-10-29 | 2019-11-01 | 3.08d |  |  |  |  |  | 37.6h | 37.6h | 100% |
| 73 | 1.3.4.7.1 | **DFA03 – Refeitório** |  | 0.88d | 2019-10-29 A | 2019-10-29 A |  | 100% | 2019-10-29 | 2019-10-29 | 0.88d |  |  |  |  |  | 8h | 8h | 100% |
| 74 | 1.3.4.7.1.1 | Substituir o WS-2960-24TC-S p/ WS-2960X-24PS-L e organização lógica; |  | 1d | 2019-10-29 A | 2019-10-29 A | 42 | 100% | 2019-10-29 | 2019-10-29 | 1d |  |  | start no earlier than 2019-10-29 | 24 Horas | 2S | 8h | 8h | 100% |
| 75 | 1.3.4.7.1.2 | DFA03 – Refeitório migrado | milestone | 0d | 2019-10-29 A | 2019-10-29 A | 74SS | 100% | 2019-10-29 | 2019-10-29 | 0d |  |  |  |  |  |  |  | 100% |
| 76 | 1.3.4.7.2 | **DFA04 – Compras** |  | 0.75d | 2019-10-29 A | 2019-10-29 A |  | 100% | 2019-10-29 | 2019-10-29 | 0.75d |  |  |  |  |  | 8h | 8h | 100% |
| 77 | 1.3.4.7.2.1 | Substituir WS-2960X-48FPS-L por 02x WS-2960X-24PS-L. Instalação de 02 módulos stack e 01 módulo SFP para unificação/redundância dos comutadores e padronização lógica; |  | 1d | 2019-10-29 A | 2019-10-29 A | 75 | 100% | 2019-10-29 | 2019-10-29 | 1d |  |  | finish no earlier than 2019-10-29 | 24 Horas | 2S | 8h | 8h | 100% |
| 78 | 1.3.4.7.2.2 | DFA04 – Compras migrado | milestone | 0d | 2019-10-29 A | 2019-10-29 A | 77SS | 100% | 2019-10-29 | 2019-10-29 | 0d |  |  |  |  |  |  |  | 100% |
| 79 | 1.3.4.7.3 | **DFA07 – DTI*** |  | 0.2d | 2019-10-29 A | 2019-10-29 A |  | 100% | 2019-10-29 | 2019-10-29 | 0.2d |  |  |  |  |  | 1.6h | 1.6h | 100% |
| 80 | 1.3.4.7.3.1 | Instalar 02 módulos stack e 01 módulo SFP para unificação/redundância dos comutadores e padronização lógica; |  | 0.2d | 2019-10-29 A | 2019-10-29 A | 78FF | 100% | 2019-10-29 | 2019-10-29 | 0.2d |  |  |  |  | 2S | 1.6h | 1.6h | 100% |
| 81 | 1.3.4.7.3.2 | DFA07 – DTI* instalado | milestone | 0d | 2019-10-29 A | 2019-10-29 A | 80SS | 100% | 2019-10-29 | 2019-10-29 | 0d |  |  |  |  |  |  |  | 100% |
| 82 | 1.3.4.7.4 | **PTG40 – Eng. Processo** |  | 0.5d | 2019-10-30 A | 2019-10-30 A |  | 100% | 2019-10-30 | 2019-10-30 | 0.5d |  |  |  |  |  | 4h | 4h | 100% |
| 83 | 1.3.4.7.4.1 | Instalar de 02 módulos stack e 01 módulo SFP para unificação/redundância dos comutadores e padronização lógica; |  | 0.5d | 2019-10-30 A | 2019-10-30 A | 81 | 100% | 2019-10-30 | 2019-10-30 | 0.5d |  |  | must start on 2019-10-30 | Padrão | 2S | 4h | 4h | 100% |
| 84 | 1.3.4.7.4.2 | PTG40 – Eng. Processo instalado | milestone | 0d | 2019-10-30 A | 2019-10-30 A | 83SS | 100% | 2019-10-30 | 2019-10-30 | 0d |  |  |  |  |  |  |  | 100% |
| 85 | 1.3.4.7.5 | **DFA06 – Diretoria** |  | 0.5d | 2019-10-30 A | 2019-10-30 A |  | 100% | 2019-10-30 | 2019-10-30 | 0.5d |  |  |  |  |  | 4h | 4h | 100% |
| 86 | 1.3.4.7.5.1 | Instalar 02 módulos stack e 01 módulo SFP para unificação/redundância dos comutadores e padronização lógica; |  | 0.5d | 2019-10-30 A | 2019-10-30 A | 84 | 100% | 2019-10-30 | 2019-10-30 | 0.5d |  |  | start no earlier than 2019-10-30 |  | 2S | 4h | 4h | 100% |
| 87 | 1.3.4.7.5.2 | DFA06 – Diretoria migrado | milestone | 0d | 2019-10-30 A | 2019-10-30 A | 86SS | 100% | 2019-10-30 | 2019-10-30 | 0d |  |  |  |  |  |  |  | 100% |
| 88 | 1.3.4.7.6 | **PTG32 – Eng. Produtos** |  | 0.5d | 2019-10-31 A | 2019-10-31 A |  | 100% | 2019-10-31 | 2019-11-01 | 1d |  |  |  |  |  | 4h | 4h | 100% |
| 89 | 1.3.4.7.6.1 | Instalar de 02 módulos stack e 01 módulo SFP para unificação/redundância dos comutadores e padronização lógica; |  | 0.5d | 2019-10-31 A | 2019-10-31 A | 87 | 100% | 2019-10-31 | 2019-11-01 | 1d |  |  | start no earlier than 2019-10-31 |  | 2S | 4h | 4h | 100% |
| 90 | 1.3.4.7.6.2 | PTG32 – Eng. Produtos instalado | milestone | 0d | 2019-10-31 A | 2019-10-31 A | 89SS | 100% | 2019-10-31 | 2019-10-31 | 0d |  |  |  |  |  |  |  | 100% |
| 91 | 1.3.4.7.7 | **DFR50 Komatzu** |  | 0.5d | 2019-10-31 A | 2019-10-31 A |  | 100% | 2019-10-31 | 2019-10-31 | 0.5d |  |  |  |  |  | 4h | 4h | 100% |
| 92 | 1.3.4.7.7.1 | Instalar 01x WS-2960X-24PS-L, vindo do rack SOH45, para substituir 01 switch SG-300-28. Instalar 01 módulo SFP para unificação/redundância dos comutadores e padronização lógica; |  | 0.5d | 2019-10-31 A | 2019-10-31 A | 90 | 100% | 2019-10-31 | 2019-10-31 | 0.5d |  |  | start no earlier than 2019-10-30 | 24 Horas | 2S | 4h | 4h | 100% |
| 93 | 1.3.4.7.7.2 | DFR50 Komatzu instalado | milestone | 0d | 2019-10-31 A | 2019-10-31 A | 92SS | 100% | 2019-10-31 | 2019-10-31 | 0d |  |  |  |  |  |  |  | 100% |

Notes:
- 70: 12.11 - Foi realizado na noite do dia 11/11 a atualização do IOS. Sendo que não faz pare do projeto atual. Está pendente a padronização lógica e instalação do SFP.

| ID | WBS | Task | Type | Duration | Start | Finish | Predecessors | Complete | Remaining | Baseline start | Baseline finish | Baseline duration | Total slack | Constraint | Calendar | Resources | Work | Actual work | % Planejado |
| --- | --- | --- | --- | --- | --- | --- | --- | --- | --- | --- | --- | --- | --- | --- | --- | --- | --- | --- | --- |
| 94 | 1.3.4.7.8 | **NKG30 – Sala de Reunião** |  | 0.5d | 2019-10-31 A | 2019-10-31 A |  | 100% |  | 2019-10-31 | 2019-11-01 | 1d |  |  |  |  | 4h | 4h | 100% |
| 95 | 1.3.4.7.8.1 | Instalar 01 Instalação switch WS-2960X-24PS-L para atender densidades de portas locais. Instalação de 02 módulos stack e 01 módulo SFP para unificação/redundância dos comutadores e padronização lógica. Remanejamento do Up Link do rack para o Core |  | 0.5d | 2019-10-31 A | 2019-10-31 A | 93SS | 100% |  | 2019-10-31 | 2019-11-01 | 1d |  |  | 24 Horas | 2S | 4h | 4h | 100% |
| 96 | 1.3.4.7.8.2 | NKG30 – Sala de Reunião migrado | milestone | 0d | 2019-10-31 A | 2019-10-31 A | 95SS | 100% |  | 2019-10-31 | 2019-10-31 | 0d |  |  |  |  |  |  | 100% |
| 97 | 1.3.4.8 | **Atividades aos Domingos** |  | 15d | 2019-10-20 A | 2019-11-10 |  | 79% | 3.12d | 2019-10-20 | 2019-11-10 | 15d | 29d |  |  |  | 36.8h | 28.8h | 100% |
| 98 | 1.3.4.8.1 | **Data Center** |  | 2.12d | 2019-10-20 A | 2019-10-23 |  | 99% | 0d | 2019-10-20 | 2019-10-23 | 2.12d | 41.88d |  |  |  | 8h | 8h | 100% |
| 99 | 1.3.4.8.1.1 | Instalar 02x WS-3850-24S-S sendo uma delas para substituição de 01 unidade, já existente, do modelo WS-3850-12S. e padronização lógica; |  | 1d | 2019-10-20 A | 2019-10-20 A | 42 | 100% |  | 2019-10-20 | 2019-10-20 | 1d |  | start no earlier than 2019-10-20 | 24 Horas | 2S | 8h | 8h | 100% |
| 100 | 1.3.4.8.1.2 | Data Center instalado | milestone | 0d | 2019-10-20 A | 2019-10-20 A | 99 | 100% |  | 2019-10-20 | 2019-10-20 | 0d |  |  |  |  |  |  | 100% |
| 101 | 1.3.4.8.1.3 | Instalar 21x módulos SFP para unificação/redundância dos comutadores. | milestone | 0d | 2019-10-23 | 2019-10-23 | 100 |  |  | 2019-10-23 | 2019-10-23 | 0d | 42.88d | start no earlier than 2019-10-23 | Padrão |  |  |  | 100% |
| 102 | 1.3.4.8.2 | **PTG39 – Reunião Eng.** |  | 0d | 2019-10-20 A | 2019-10-20 A |  | 100% |  | 2019-10-20 | 2019-10-20 | 0d |  |  |  |  | 0.8h | 0.8h | 100% |
| 103 | 1.3.4.8.2.1 | Instala 02x WS-C3850-12S. Instalar 01x WS-2960X-24PS-L substituindo 01 WS-2960-24TC-S. Instalar 02 módulos stack linha 3800 e instalar 02 módulos stack linha 2900. |  | 0.1d | 2019-10-20 A | 2019-10-20 A | 100SS | 100% |  | 2019-10-20 | 2019-10-20 | 0.1d |  | start no earlier than 2019-10-20 | 24 Horas | 2S | 0.8h | 0.8h | 100% |
| 104 | 1.3.4.8.2.2 | PTG39 – Reunião Eng. Instalado | milestone | 0d | 2019-10-20 A | 2019-10-20 A | 103SS | 100% |  | 2019-10-20 | 2019-10-20 | 0d |  |  |  |  |  |  | 100% |
| 105 | 1.3.4.8.2.3 | Instalação de 13 módulos SFP | milestone | 0d | 2019-10-20 A | 2019-10-20 A | 103 | 100% |  | 2019-10-20 | 2019-10-20 | 0d |  |  | 24 Horas |  |  |  | 100% |
| 106 | 1.3.4.8.3 | **SCB11 – Show Room** |  | 0d | 2019-10-27 A | 2019-10-27 A |  | 100% |  | 2019-10-27 | 2019-10-27 | 0d |  |  |  |  | 8h | 8h | 100% |
| 107 | 1.3.4.8.3.1 | Instalar 01x WS-C3850-12S. Instalar 01 módulo de fibra C3850-NM-4-1GB. Instalar 02 módulos stack linha 3800 e instalação 02 módulos stack linha 2900.Instalar 19 módulos SFP para redundância do ambiente e organização lógica; |  | 1d | 2019-10-27 A | 2019-10-27 A | 104 | 100% |  | 2019-10-27 | 2019-10-27 | 1d |  | start no earlier than 2019-10-27 | 24 Horas | 2S | 8h | 8h | 100% |
| 108 | 1.3.4.8.3.2 | SCB11 – Show Room instalado | milestone | 0d | 2019-10-27 A | 2019-10-27 A | 107SS | 100% |  | 2019-10-27 | 2019-10-27 | 0d |  |  |  |  |  |  | 100% |
| 109 | 1.3.4.8.4 | **MTZ47 – Sala Qualidade** |  | 0d | 2019-10-27 A | 2019-10-27 A |  | 100% |  | 2019-10-27 | 2019-10-27 | 0d |  |  |  |  |  |  | 100% |
| 110 | 1.3.4.8.4.1 | Substituir WS-2960X-48FPS-L por 02x WS-2960X-24PS-L. Instalação de 02 módulos stack e 01 módulo SFP para unificação/redundância dos comutadores e padronização lógica; |  | 1d | 2019-10-27 A | 2019-10-27 A | 104 | 100% |  | 2019-10-27 | 2019-10-27 | 1d |  | start no earlier than 2019-10-27 | 24 Horas |  |  |  | 100% |
| 111 | 1.3.4.8.4.2 | MTZ47 – Sala Qualidade migrado | milestone | 0d | 2019-10-27 A | 2019-10-27 A | 110 | 100% |  | 2019-10-27 | 2019-10-27 | 0d |  |  |  |  |  |  | 100% |
| 112 | 1.3.4.8.5 | **SCB21 – Seg. industrial** |  | 1d | 2019-11-04 A | 2019-11-04 A |  | 100% |  | 2019-11-04 | 2019-11-04 | 1d |  |  |  |  | 8h | 8h | 100% |
| 113 | 1.3.4.8.5.1 | Instalar 02 módulos stack e 02 módulos SFP para unificação/redundância dos comutadores e padronização lógica. Remanejamento do Up Link do rack SBC27, sendo essa localidade um dos pontos de distribuição da rede; |  | 1d | 2019-11-04 A | 2019-11-04 A | 108SS | 100% |  | 2019-11-04 | 2019-11-04 | 1d |  | start no earlier than 2019-11-03 | 24 Horas | 2S | 8h | 8h | 100% |
| 114 | 1.3.4.8.5.2 | SBC21 – Seg. industrial instalado | milestone | 0d | 2019-11-04 A | 2019-11-04 A | 113SS | 100% |  | 2019-11-04 | 2019-11-04 | 0d |  |  |  |  |  |  | 100% |
| 115 | 1.3.4.8.6 | **PTG41 – Fábrica** |  | 0d | 2019-11-10 A | 2019-11-10 A |  | 100% |  | 2019-11-10 | 2019-11-10 | 0d |  |  |  |  | 4h | 4h | 100% |
| 116 | 1.3.4.8.6.1 | Substituir 01 switch 3Com por 01 unidade do WS-2960X-24PS-L. Instalar 02 módulos stack e 01 módulo SFP para unificação/redundância dos comutadores e padronização lógica; |  | 0.5d | 2019-11-10 A | 2019-11-10 A | 123 | 100% |  | 2019-11-10 | 2019-11-10 | 0.5d |  | start no earlier than 2019-11-10 | 24 Horas | 2S | 4h | 4h | 100% |
| 117 | 1.3.4.8.6.2 | PTG41 – Fábrica instalado | milestone | 0d | 2019-11-10 A | 2019-11-10 A | 116SS | 100% |  | 2019-11-10 | 2019-11-10 | 0d |  |  |  |  |  |  | 100% |

Notes:
- 105: Dos 13 SFPs foram instalados 4 para fazer o Etherchannel entre os stacks 2960 e 3850.
- 113: Atividade iria ser realizada no Domingo 27/10, porém a sala estava trancada e não disponibilizaram a chave para acesso. Atividade sendo reprogramada para o próximo Domingo 03/11.

| ID | WBS | Task | Type | Duration | Start | Finish | Predecessors | Complete | Baseline start | Baseline finish | Baseline duration | Total slack | Free slack | Constraint | Calendar | Resources | Work | % Planejado |
| --- | --- | --- | --- | --- | --- | --- | --- | --- | --- | --- | --- | --- | --- | --- | --- | --- | --- | --- |
| 118 | 1.3.4.8.7 | **SCB28 – U.M. Deslizantes** |  | 1d | 2019-11-04 | 2019-11-04 |  |  | 2019-11-04 | 2019-11-04 | 1d | 33d |  |  |  |  | 8h | 100% |
| 119 | 1.3.4.8.7.1 | Substituir 01x WS-2960X-48FPS-L por 02 unidades do WS-2960X-24PS-L. Instalar 02 módulos stack e 01 módulo SFP para unificação/redundância dos comutadores e padronização lógica; |  | 1d | 2019-11-04 | 2019-11-04 | 114SS |  | 2019-11-04 | 2019-11-04 | 1d | 138d | 0d | start no earlier than 2019-11-03 | 24 Horas | 2S | 8h | 100% |
| 120 | 1.3.4.8.7.2 | SBC28 – U.M. Deslizantes instalado | milestone | 0d | 2019-11-04 | 2019-11-04 | 119SS |  | 2019-11-04 | 2019-11-04 | 0d | 144.32d |  |  | 24 Horas |  |  | 100% |
| 121 | 1.3.4.8.8 | **ADM01 – PABX** |  | 0d | 2019-11-10 A | 2019-11-10 A |  | 100% | 2019-11-10 | 2019-11-10 | 0d |  |  |  |  |  |  | 100% |
| 122 | 1.3.4.8.8.1 | Instalar 02 módulos stack para unificação/redundância dos comutadores e padronização lógica; |  | 1d | 2019-11-10 A | 2019-11-10 A | 99 | 100% | 2019-11-10 | 2019-11-10 | 1d |  |  | start no earlier than 2019-11-10 | 24 Horas |  |  | 100% |
| 123 | 1.3.4.8.8.2 | ADM01 – PABX instalado | milestone | 0d | 2019-11-10 A | 2019-11-10 A | 122SS | 100% | 2019-11-10 | 2019-11-10 | 0d |  |  |  |  |  |  | 100% |
| 124 | 1.3.4.8.9 | **SCB18 – Mezanino** |  | 0.88d | 2019-11-06 A | 2019-11-06 A |  | 100% | 2019-11-04 | 2019-11-04 | 0.88d |  |  |  |  |  |  | 100% |
| 125 | 1.3.4.8.9.1 | Instalar 02 módulos stack e 01 módulo SFP para unificação/redundância dos comutadores e padronização lógica; |  | 1d | 2019-11-06 A | 2019-11-06 A | 120SS | 100% | 2019-11-04 | 2019-11-04 | 1d |  |  | start no earlier than 2019-11-06 | 24 Horas |  |  | 100% |
| 126 | 1.3.4.8.9.2 | SCB18 – Mezanino instalado | milestone | 0d | 2019-11-06 A | 2019-11-06 A | 125SS | 100% | 2019-11-04 | 2019-11-04 | 0d |  |  |  |  |  |  | 100% |
| 127 | 1.3.4.8.10 | **SCB19 – Eng. Processos** |  | 0d | 2019-11-10 A | 2019-11-10 A |  | 100% | 2019-11-10 | 2019-11-10 | 0d |  |  |  |  |  |  | 100% |
| 128 | 1.3.4.8.10.1 | Instalar 02 módulos stack e 01 módulo SFP para unificação/redundância dos comutadores e padronização lógica; |  | 1d | 2019-11-10 A | 2019-11-10 A | 126SS | 100% | 2019-11-10 | 2019-11-10 | 1d |  |  | must start on 2019-11-10 | 24 Horas |  |  | 100% |
| 129 | 1.3.4.8.10.2 | SBC19 – Eng. Processos instalado | milestone | 0d | 2019-11-10 A | 2019-11-10 A | 128SS | 100% | 2019-11-10 | 2019-11-10 | 0d |  |  |  |  |  |  | 100% |
| 130 | 1.3.4.8.11 | **SOH45 – Eng. Produto** |  | 0d | 2019-11-10 | 2019-11-10 |  |  | 2019-11-10 | 2019-11-10 | 0d | 1.12d |  |  |  |  |  | 100% |
| 131 | 1.3.4.8.11.1 | Instalar 02x WS-C3850-12S. Instalar 01x WS-2960X-24PS-L substituindo 01 switch WS-2960-24TS-S. Instalar 02 módulos stack linha 3800 e 02 módulos stack linha 2900. Instalação de 05 módulos SFP |  | 1d | 2019-11-10 | 2019-11-10 | 116SS |  | 2019-11-10 | 2019-11-10 | 1d | 6d | 0d | start no earlier than 2019-11-10 | 24 Horas |  |  | 100% |
| 132 | 1.3.4.8.11.2 | SOH45 – Eng. Produto instalado | milestone | 0d | 2019-11-10 | 2019-11-10 | 131SS |  | 2019-11-10 | 2019-11-10 | 0d | 1.12d | 0d |  |  |  |  | 100% |
| 133 | 1.3.4.9 | Migração LAN realizada | milestone | 0d | 2019-11-10 | 2019-11-10 | 132 |  | 2019-11-10 | 2019-11-10 | 0d | 1.12d | 0d |  |  |  |  | 100% |
| 134 | 1.3.5 | **WLAN** |  | 4.88d | 2019-11-04 | 2019-11-10 |  |  | 2019-11-04 | 2019-11-10 | 4.88d | 29d |  |  |  |  |  | 100% |
| 135 | 1.3.5.1 | Realizar Staging dos Aps |  | 1d | 2019-11-04 | 2019-11-04 | 32, 35 |  | 2019-11-04 | 2019-11-04 | 1d | 132.88d | 0d |  | 24 Horas |  |  | 100% |
| 136 | 1.3.5.2 | STAGING APs realizado | milestone | 0d | 2019-11-04 | 2019-11-04 | 135 |  | 2019-11-04 | 2019-11-04 | 0d | 31d | 0d |  |  |  |  | 100% |
| 137 | 1.3.5.3 | Entregar Aps para equipe de INFRA instalar |  | 1d | 2019-11-04 | 2019-11-05 | 136 |  | 2019-11-04 | 2019-11-05 | 1d | 132.88d | 0.88d |  | 24 Horas |  |  | 100% |
| 138 | 1.3.5.4 | Elaborar GMUD WLAN |  | 1d | 2019-11-05 | 2019-11-05 | 137 |  | 2019-11-05 | 2019-11-05 | 1d | 31d | 0d |  |  |  |  | 100% |
| 139 | 1.3.5.5 | Enviar GMUD WLAN para aprovação |  | 1d | 2019-11-06 | 2019-11-06 | 138 |  | 2019-11-06 | 2019-11-06 | 1d | 31d | 0d |  |  |  |  | 100% |
| 140 | 1.3.5.6 | GMUD WLAN aprovado | milestone | 0d | 2019-11-06 | 2019-11-06 | 139 |  | 2019-11-06 | 2019-11-06 | 0d | 31d | 2d |  |  |  |  | 100% |
| 141 | 1.3.5.7 | Realizar a atualização da WLC |  | 1d | 2019-11-10 | 2019-11-10 | 140 |  | 2019-11-10 | 2019-11-10 | 1d | 125.2d | 0d | start no earlier than 2019-11-10 | 24 Horas |  |  | 100% |
| 142 | 1.3.5.8 | Atualização WLC realizada | milestone | 0d | 2019-11-10 | 2019-11-10 | 141 |  | 2019-11-10 | 2019-11-10 | 0d | 29d |  |  |  |  |  | 100% |

Notes:
- 128: 12.11 - Lucas irá verificar se foi feito as atividades deste rack.
- 131: 12.11 - A DANA precisa trocar o rack para poder instalar os novos switches, pois não há espaço no rack atual.

| ID | WBS | Task | Type | Duration | Start | Finish | Predecessors | Complete | Remaining | Baseline start | Baseline finish | Baseline duration | Total slack | Free slack | Constraint | Calendar | Resources | Work | % Planejado |
| --- | --- | --- | --- | --- | --- | --- | --- | --- | --- | --- | --- | --- | --- | --- | --- | --- | --- | --- | --- |
| 143 | 1.3.6 | **TELEFONIA** |  | 15d | 2019-10-24 A | 2019-11-14 |  | 40% | 9d | 2019-10-24 | 2019-11-14 | 15d | 0d |  |  |  |  |  | 99% |
| 144 | 1.3.6.1 | Realizar o Staging de TELEFONIA |  | 2d | 2019-10-24 A | 2019-10-28 A | 28 | 100% |  | 2019-10-24 | 2019-10-28 | 2d |  |  | start no earlier than 2019-10-24 | Padrão |  |  | 100% |
| 145 | 1.3.6.2 | STAGING GW realizados | milestone | 0d | 2019-10-28 A | 2019-10-28 A | 144 | 100% |  | 2019-10-28 | 2019-10-28 | 0d |  |  |  |  |  |  | 100% |
| 146 | 1.3.6.3 | Elaborar GMUD TELEFONIA |  | 2d | 2019-10-28 A | 2019-10-30 A | 145 | 100% |  | 2019-10-28 | 2019-10-30 | 2d |  |  |  |  |  |  | 100% |
| 147 | 1.3.6.4 | Enviar GMUD TELEFONIA para aprovação |  | 2d | 2019-10-30 A | 2019-11-01 A | 146 | 100% |  | 2019-10-30 | 2019-11-01 | 2d |  |  |  |  |  |  | 100% |
| 148 | 1.3.6.5 | GMUD TELEFONIA aprovado | milestone | 0d | 2019-11-01 A | 2019-11-01 A | 147 | 100% |  | 2019-11-01 | 2019-11-01 | 0d |  |  |  |  |  |  | 100% |
| 149 | 1.3.6.6 | Realizar a migração TELEFONIA |  | 9d | 2019-11-01 | 2019-11-14 | 148 |  |  | 2019-11-01 | 2019-11-14 | 9d | 0d |  |  |  |  |  | 99% |
| 150 | 1.3.6.7 | Migração TELEFONIA realizada | milestone | 0d | 2019-11-14 | 2019-11-14 | 149 |  |  | 2019-11-14 | 2019-11-14 | 0d | 0d |  |  |  |  |  | 0% |
| 151 | 1.4 | **Documentação** |  | 8.12d | 2019-11-11 | 2019-11-22 |  |  |  | 2019-11-11 | 2019-11-22 | 8.12d | 1.12d |  |  |  | Marília Dalila | 65h | 21% |
| 152 | 1.4.1 | **TELEFONIA** |  | 5d | 2019-11-14 | 2019-11-22 |  |  |  | 2019-11-14 | 2019-11-22 | 5d | 0d |  |  |  |  |  | 0% |
| 153 | 1.4.1.1 | Preparar o AS-BUILT TELEFONIA |  | 3d | 2019-11-14 | 2019-11-20 | 150 |  |  | 2019-11-14 | 2019-11-20 | 3d | 0d |  |  |  |  |  | 0% |
| 154 | 1.4.1.2 | Enviar o AS-BUILT TELEFONIA para aprovação |  | 1d | 2019-11-20 | 2019-11-21 | 153 |  |  | 2019-11-20 | 2019-11-21 | 1d | 0d |  |  |  |  |  | 0% |
| 155 | 1.4.1.3 | AS-BUILT TELEFONIA aprovado | milestone | 0d | 2019-11-21 | 2019-11-21 | 154 |  |  | 2019-11-21 | 2019-11-21 | 0d | 0d |  |  |  |  |  | 0% |
| 156 | 1.4.1.4 | Traduzir AS-BUILT TELEFONIA para inglês |  | 1d | 2019-11-21 | 2019-11-22 | 155 |  |  | 2019-11-21 | 2019-11-22 | 1d | 20.88d | 0d |  |  |  |  | 0% |
| 157 | 1.4.1.5 | AS-BUILT inglês aprovado | milestone | 0d | 2019-11-22 | 2019-11-22 | 156 |  |  | 2019-11-22 | 2019-11-22 | 0d | 20.88d | 0d |  |  |  |  | 0% |
| 158 | 1.4.2 | **LAN** |  | 5d | 2019-11-11 | 2019-11-18 |  |  |  | 2019-11-11 | 2019-11-18 | 5d | 1.12d |  |  |  |  |  | 60% |
| 159 | 1.4.2.1 | Preparar o AS-BUILT LAN |  | 3d | 2019-11-11 | 2019-11-13 | 133 |  |  | 2019-11-11 | 2019-11-13 | 3d | 1.12d | 0d |  |  |  |  | 100% |
| 160 | 1.4.2.2 | Enviar AS-BUILT LAN |  | 1d | 2019-11-14 | 2019-11-14 | 159 |  |  | 2019-11-14 | 2019-11-14 | 1d | 3.12d | 0d |  |  |  |  | 0% |
| 161 | 1.4.2.3 | AS-BUILT LAN aprovado | milestone | 0d | 2019-11-14 | 2019-11-14 | 160 |  |  | 2019-11-14 | 2019-11-14 | 0d | 3.12d | 0d |  |  |  |  | 0% |
| 162 | 1.4.2.4 | Traduzir o AS-BUILT para inglês |  | 1d | 2019-11-18 | 2019-11-18 | 161 |  |  | 2019-11-18 | 2019-11-18 | 1d | 24d | 0d |  |  |  |  | 0% |
| 163 | 1.4.2.5 | AS-BUILT LAN inglês aprovado | milestone | 0d | 2019-11-18 | 2019-11-18 | 162 |  |  | 2019-11-18 | 2019-11-18 | 0d | 24d | 3.12d |  |  |  |  | 0% |
| 164 | 1.4.3 | **WLAN** |  | 4d | 2019-11-14 | 2019-11-20 |  |  |  | 2019-11-14 | 2019-11-20 | 4d | 1.12d |  |  |  |  |  | 0% |
| 165 | 1.4.3.1 | Preparar o AS-BUILT WLAN |  | 2d | 2019-11-14 | 2019-11-18 | 159 |  |  | 2019-11-14 | 2019-11-18 | 2d | 1.12d | 0d |  |  |  |  | 0% |
| 166 | 1.4.3.2 | Enviar AS-BUILT WLAN |  | 1d | 2019-11-19 | 2019-11-19 | 165 |  |  | 2019-11-19 | 2019-11-19 | 1d | 1.12d | 0d |  |  |  |  | 0% |
| 167 | 1.4.3.3 | AS-BUILT WLAN aprovado | milestone | 0d | 2019-11-19 | 2019-11-19 | 166 |  |  | 2019-11-19 | 2019-11-19 | 0d | 1.12d | 0d |  |  |  |  | 0% |
| 168 | 1.4.3.4 | Traduzir o AS-BUILT WLAN para inglês |  | 1d | 2019-11-20 | 2019-11-20 | 167 |  |  | 2019-11-20 | 2019-11-20 | 1d | 22d | 0d |  |  |  |  | 0% |
| 169 | 1.4.3.5 | AS-BUILT WLAN inglês aprovado | milestone | 0d | 2019-11-20 | 2019-11-20 | 168 |  |  | 2019-11-20 | 2019-11-20 | 0d | 22d | 1.12d |  |  |  |  | 0% |
| 170 | 1.4.4 | Documentação finalizada | milestone | 0d | 2019-11-22 | 2019-11-22 | 157, 169, 163 |  |  | 2019-11-22 | 2019-11-22 | 0d | 20.88d |  |  |  |  |  | 0% |

| ID | WBS | Task | Type | Duration | Start | Finish | Predecessors | Baseline start | Baseline finish | Baseline duration | Total slack | Constraint | Resources | Work | % Planejado |
| --- | --- | --- | --- | --- | --- | --- | --- | --- | --- | --- | --- | --- | --- | --- | --- |
| 171 | 1.5 | **Encerramento do Projeto** |  | 21.88d | 2019-11-21 | 2019-12-22 |  | 2019-11-21 | 2019-12-22 | 21.88d | 0d |  | *Pedro; MAgno; Prado; Robson; Silva | 875h | 0% |
| 172 | 1.5.1 | Enviar Termo de Aceite final |  | 0.5d | 2019-11-21 | 2019-11-21 | 155, 161, 167 | 2019-11-21 | 2019-11-21 | 0.5d | 0d |  |  |  | 0% |
| 173 | 1.5.2 | Aprovar Termo de Aceite Final |  | 0.2d | 2019-11-21 | 2019-11-21 | 172 | 2019-11-21 | 2019-11-21 | 0.2d | 0d |  |  |  | 0% |
| 174 | 1.5.3 | Termo de aceite entregue e aceito | milestone | 0d | 2019-11-21 | 2019-11-21 | 173 | 2019-11-21 | 2019-11-21 | 0d | 0d |  |  |  | 0% |
| 175 | 1.5.4 | Faturar o Projeto |  | 0.5d | 2019-11-21 | 2019-11-22 | 174SS | 2019-11-21 | 2019-11-22 | 0.5d | 0d | start no earlier than 2019-11-20 |  |  | 0% |
| 176 | 1.5.5 | Projeto faturado | milestone | 0d | 2019-11-22 | 2019-11-22 | 175 | 2019-11-22 | 2019-11-22 | 0d | 0d |  |  |  | 0% |
| 177 | 1.5.6 | Projeto TMP encerrado | milestone | 0d | 2019-11-22 | 2019-11-22 | 176 | 2019-11-22 | 2019-11-22 | 0d | 20.68d |  |  |  | 0% |
| 178 | 1.5.7 | Pagamento realizado | milestone | 0d | 2019-12-22 | 2019-12-22 | 176FS+30ed | 2019-12-22 | 2019-12-22 | 0d | 0d |  |  |  | 0% |
